# Hybrid Campus

Schedule from MS Project XML, 2021-11-16 to 2024-11-13.

## Calendars

- Standard: Mon-Fri 08:00-12:00, 13:00-17:00; Sat-Sun off.

## Resources

| Resource |
| --- |
| Unassigned |

## Schedule

| ID | WBS | Task | Type | Duration | Start | Finish | Predecessors | Total slack | Free slack | Constraint | EF | LF | ES (Text1) | LS |
| --- | --- | --- | --- | --- | --- | --- | --- | --- | --- | --- | --- | --- | --- | --- |
| 1 | 1 | **1 Concept** |  | 46.38d | 2021-11-16 | 2022-01-20 |  |  |  |  |  |  |  |  |
| 2 | 1.1 | **1.1 Define requirements** |  | 10d | 2021-11-16 | 2021-11-29 |  |  |  |  |  |  |  |  |
| 3 | 1.1.1 | 1.1.1 Define accreditation requirements |  | 10d | 2021-11-16 | 2021-11-29 |  | 0d |  | start no earlier than 2021-11-15 | 11 | 11 |  |  |
| 4 | 1.1.2 | 1.1.2 Define user requirements |  | 10d | 2021-11-16 | 2021-11-29 | 3SS | 0d |  | start no earlier than 2021-11-15 | 11 | 11 |  |  |
| 5 | 1.1.3 | 1.1.3 Define system requirements |  | 10d | 2021-11-16 | 2021-11-29 | 3SS | 0d |  | start no earlier than 2021-11-15 | 11 | 11 |  |  |
| 6 | 1.1.4 | 1.1.4 Define content requirements |  | 10d | 2021-11-16 | 2021-11-29 | 3SS | 0d |  | start no earlier than 2021-11-15 | 11 | 11 |  |  |
| 7 | 1.1.5 | 1.1.5 Define quality requirements |  | 10d | 2021-11-16 | 2021-11-29 | 3SS | 0d |  | start no earlier than 2021-11-15 | 11 | 11 |  |  |
| 8 | 1.2 | **1.2 Define specific functionality & characteristics** |  | 13d | 2021-11-30 | 2021-12-17 | 2 |  |  |  |  |  |  |  |
| 9 | 1.2.1 | 1.2.1 Define study centre functionality & characteristics |  | 13d | 2021-11-30 | 2021-12-17 | 7, 3, 4, 5, 6 | 0d |  | finish no earlier than 2021-12-17 | 24 | 24 | 10 | 10 |
| 10 | 1.2.2 | 1.2.2 Define studio functionality & characteristics |  | 13d | 2021-11-30 | 2021-12-17 | 3 | 0d |  | finish no earlier than 2021-12-17 | 24 | 24 | 10 | 10 |
| 11 | 1.3 | Completion of defining requirements & product characteristics | milestone, manual | 0d | 2021-12-17 | 2021-12-17 | 10 |  |  |  | 24 | 24 | 23 | 23 |
| 12 | 1.4 | **1.3 Project management** |  | 23d | 2021-12-17 | 2022-01-19 | 8 |  |  |  |  |  |  |  |
| 13 | 1.4.1 | 1.3.1 Brief project team |  | 9d | 2021-12-17 | 2021-12-30 | 9, 11 | 0d |  | finish no earlier than 2021-12-30 | 33 | 33 | 23 | 23 |
| 14 | 1.4.2 | 1.3.2 Develop project plan |  | 9d | 2021-12-30 | 2022-01-12 | 13 | 0d |  | finish no earlier than 2022-01-12 | 42 | 42 | 32 | 32 |
| 15 | 1.4.3 | 1.3.3 Define risk and risk management approach |  | 5d | 2022-01-12 | 2022-01-19 | 14 | 0d |  | finish no earlier than 2022-01-19 | 47 | 47 | 41 | 41 |
| 16 | 1.4.4 | Completion of project plan | milestone, manual | 0d | 2022-01-19 | 2022-01-19 | 15 |  |  |  | 47 | 47 | 46 | 46 |
| 17 | 2 | **2 Design** |  | 19d | 2022-01-19 | 2022-02-15 |  | 0d |  |  |  |  |  |  |
| 18 | 2.1 | **2.1 System design** |  | 19d | 2022-01-19 | 2022-02-14 | 12 |  |  |  |  |  |  |  |
| 19 | 2.1.1 | 2.1.1 Videoconferencing system design |  | 19d | 2022-01-19 | 2022-02-14 | 16 | 2d | 0d | start no earlier than 2022-01-18 | 66 | 68 | 46 | 48 |
| 20 | 2.1.2 | 2.1.2 Student learning management system design |  | 10d | 2022-01-19 | 2022-02-01 | 19SS | 480d | 9d | start no earlier than 2022-01-18 | 57 | 537 | 46 | 526 |
| 21 | 2.1.3 | 2.1.3 OEU website design |  | 5d | 2022-01-19 | 2022-01-25 | 19SS | 485d | 14d | start no earlier than 2022-01-18 | 52 | 537 | 46 | 531 |
| 22 | 2.1.4 | 2.1.4 Assessment system design |  | 5d | 2022-01-19 | 2022-01-25 | 19SS | 485d | 14d |  | 52 | 537 | 46 | 531 |
| 23 | 2.2 | **2.2 Studio design** |  | 12d | 2022-01-19 | 2022-02-03 | 12 |  |  |  |  |  |  |  |
| 24 | 2.2.1 | 2.2.1 Studio blueprint |  | 7d | 2022-01-19 | 2022-01-28 | 16 | 0d |  | finish no earlier than 2022-01-28 | 54 | 54 | 46 | 46 |
| 25 | 2.2.2 | 2.2.2 Design hardware installation location |  | 5d | 2022-01-28 | 2022-02-03 | 24 | 0d |  | start no earlier than 2022-01-27 | 59 | 59 | 53 | 53 |
| 26 | 2.2.3 | 2.2.3 IT infrastructure design |  | 5d | 2022-01-28 | 2022-02-03 | 24 | 0d |  |  | 59 | 59 | 53 | 53 |

| ID | WBS | Task | Type | Duration | Start | Finish | Predecessors | Total slack | Free slack | Constraint | ES (Text1) | EF | LS | LF |
| --- | --- | --- | --- | --- | --- | --- | --- | --- | --- | --- | --- | --- | --- | --- |
| 27 | 2.3 | **2.3 Study centre design** |  | 10d | 2022-01-19 | 2022-02-01 | 12 |  |  |  |  |  |  |  |
| 28 | 2.3.1 | 2.3.1 Study centre blueprint |  | 5d | 2022-01-19 | 2022-01-25 | 19SS | 2d | 0d | start no earlier than 2022-01-18 | 46 | 52 | 48 | 54 |
| 29 | 2.3.2 | 2.3.2 Network location design |  | 5d | 2022-01-26 | 2022-02-01 | 28 | 2d |  | start no earlier than 2022-01-18 | 51 | 57 | 53 | 59 |
| 30 | 2.3.3 | 2.3.3 IT infrastructure design |  | 5d | 2022-01-26 | 2022-02-01 | 28 | 2d |  |  | 51 | 57 | 53 | 59 |
| 31 | 2.4 | Completion of design (study centre, studio, system & IT) | milestone, manual | 0d | 2022-02-15 | 2022-02-15 | 18, 19, 20, 21, 22 |  |  |  | 65 | 66 | 536 | 537 |
| 32 | 3 | **3 Development** |  | 664.38d | 2022-02-03 | 2024-08-21 |  |  |  |  |  |  |  |  |
| 33 | 3.1 | **3.1 System development** |  | 151d | 2022-02-15 | 2022-09-15 | 18 |  |  |  |  |  |  |  |
| 34 | 3.1.1 | 3.1.1 Videoconferencing system development |  | 151d | 2022-02-15 | 2022-09-13 | 31 | 471d | 1d | start no earlier than 2022-02-14 | 65 | 217 | 536 | 688 |
| 35 | 3.1.2 | 3.1.2 Student learning management system development |  | 63d | 2022-02-15 | 2022-05-12 | 31 | 559d | 89d |  | 65 | 129 | 624 | 688 |
| 36 | 3.1.3 | 3.1.3 OEU website modifications |  | 10d | 2022-02-15 | 2022-02-28 | 31 | 612d | 142d |  | 65 | 76 | 677 | 688 |
| 37 | 3.1.4 | 3.1.4 Develop assessment policy and procedures document |  | 10d | 2022-02-15 | 2022-02-28 | 31 | 612d | 142d |  | 65 | 76 | 677 | 688 |
| 38 | 3.2 | Completion of system & IT development | milestone, manual | 0d | 2022-09-15 | 2022-09-15 | 33 |  |  |  | 218 | 219 | 687 | 688 |
| 39 | 3.3 | **3.2 Studio development** |  | 73d | 2022-02-03 | 2022-05-17 | 23 |  |  |  |  |  |  |  |
| 40 | 3.3.1 | 3.2.1 Equipment purchase |  | 21d | 2022-02-04 | 2022-03-04 | 26, 25, 29, 30 | 0d |  | start no earlier than 2022-02-02 | 58 | 80 | 58 | 80 |
| 41 | 3.3.2 | 3.2.2 Equipment installation |  | 52d | 2022-03-07 | 2022-05-17 | 40 | 0d |  | start no earlier than 2022-03-04 | 79 | 132 | 79 | 132 |
| 42 | 3.3.3 | 3.2.3 IT infrastructure installation |  | 52d | 2022-03-07 | 2022-05-17 | 40 | 0d |  | start no earlier than 2022-03-04 | 79 | 132 | 79 | 132 |
| 43 | 3.4 | Completion of studio development | milestone, manual | 0d | 2022-05-18 | 2022-05-18 | 39 |  |  |  | 131 | 132 | 131 | 132 |
| 44 | 3.5 | **3.3 Study centre 1&2 development** |  | 109d | 2022-05-18 | 2022-10-17 | 43, 27 |  |  |  |  |  |  |  |
| 45 | 3.5.1 | 3.3.1 Lease contract agreement with local community |  | 10d | 2022-05-18 | 2022-05-31 | 41, 42 | 0d |  | start no earlier than 2022-05-13 | 131 | 142 | 131 | 142 |
| 46 | 3.5.2 | 3.3.2 Equipment purchase |  | 21d | 2022-05-18 | 2022-06-15 | 45SS | 0d |  | start no earlier than 2022-05-16 | 131 | 153 | 131 | 153 |
| 47 | 3.5.3 | 3.3.3 Equipment installation |  | 88d | 2022-06-16 | 2022-10-17 | 46, 45 | 0d |  | finish no earlier than 2022-10-15 | 152 | 241 | 152 | 241 |
| 48 | 3.5.4 | 3.3.4 IT infrastructure installation |  | 88d | 2022-06-16 | 2022-10-17 | 46 | 0d |  | finish no earlier than 2022-10-15 | 152 | 241 | 152 | 241 |
| 49 | 3.6 | **3.4 Study centre 3&4 development** |  | 119d | 2022-10-17 | 2023-03-31 | 44 |  |  |  |  |  |  |  |
| 50 | 3.6.1 | 3.4.1 Lease contract agreement with local community |  | 10d | 2022-10-18 | 2022-10-31 | 48, 47 | 0d |  | start no earlier than 2022-10-14 | 240 | 251 | 240 | 251 |
| 51 | 3.6.2 | 3.4.2 Equipment purchase |  | 22d | 2022-10-18 | 2022-11-16 | 50SS | 0d |  | finish no earlier than 2022-11-16 | 240 | 263 | 240 | 263 |
| 52 | 3.6.3 | 3.4.3 Equipment installation |  | 97d | 2022-11-17 | 2023-03-31 | 51, 50 | 0d |  | start no earlier than 2022-11-15 | 262 | 360 | 262 | 360 |
| 53 | 3.6.4 | 3.4.4 IT infrastructure installation |  | 97d | 2022-11-17 | 2023-03-31 | 51 | 0d |  | start no earlier than 2022-11-15 | 262 | 360 | 262 | 360 |

| ID | WBS | Task | Type | Duration | Start | Finish | Predecessors | Total slack | Free slack | Constraint | ES (Text1) | EF | LS | LF |
| --- | --- | --- | --- | --- | --- | --- | --- | --- | --- | --- | --- | --- | --- | --- |
| 54 | 3.7 | **3.5 Study centre 5&6 development** |  | 120d | 2023-04-03 | 2023-09-18 | 49 |  |  |  |  |  |  |  |
| 55 | 3.7.1 | 3.5.1 Lease contract agreement with local community |  | 10d | 2023-04-03 | 2023-04-14 | 53, 52 | 0d |  | start no earlier than 2023-03-31 | 359 | 370 | 359 | 370 |
| 56 | 3.7.2 | 3.5.2 Equipment purchase |  | 21d | 2023-04-03 | 2023-05-01 | 55SS | 0d |  |  | 359 | 381 | 359 | 381 |
| 57 | 3.7.3 | 3.5.3 Equipment installation |  | 99d | 2023-05-02 | 2023-09-18 | 56, 55 | 0d |  | finish no earlier than 2023-09-18 | 380 | 480 | 380 | 480 |
| 58 | 3.7.4 | 3.5.4 IT infrastructure installation |  | 99d | 2023-05-02 | 2023-09-18 | 56 | 0d |  | finish no earlier than 2023-09-18 | 380 | 480 | 380 | 480 |
| 59 | 3.8 | **3.6 Study centre 7&8 development** |  | 123d | 2023-09-18 | 2024-03-07 | 54 |  |  |  |  |  |  |  |
| 60 | 3.8.1 | 3.6.1 Lease contract agreement with local community |  | 10d | 2023-09-18 | 2023-09-29 | 58, 57 | 0d |  | start no earlier than 2023-09-15 | 479 | 490 | 479 | 490 |
| 61 | 3.8.2 | 3.6.2 Equipment purchase |  | 21d | 2023-09-18 | 2023-10-16 | 60SS | 0d |  | finish no earlier than 2023-10-16 | 479 | 501 | 479 | 501 |
| 62 | 3.8.3 | 3.6.3 Equipment installation |  | 102d | 2023-10-17 | 2024-03-06 | 61, 60 | 0d |  | finish no earlier than 2024-03-05 | 500 | 603 | 500 | 603 |
| 63 | 3.8.4 | 3.6.4 IT infrastructure installation |  | 102d | 2023-10-17 | 2024-03-06 | 61 | 0d |  | finish no earlier than 2024-03-05 | 500 | 603 | 500 | 603 |
| 64 | 3.9 | **3.7 Study centre 9&10 development** |  | 119d | 2024-03-06 | 2024-08-21 | 59 |  |  |  |  |  |  |  |
| 65 | 3.9.1 | 3.7.1 Lease contract agreement with local community |  | 10d | 2024-03-07 | 2024-03-20 | 63, 62 | 0d |  |  | 602 | 613 | 602 | 613 |
| 66 | 3.9.2 | 3.7.2 Equipment purchase |  | 21d | 2024-03-07 | 2024-04-04 | 65SS | 0d |  |  | 602 | 624 | 602 | 624 |
| 67 | 3.9.3 | 3.7.3 Equipment installation |  | 98d | 2024-04-05 | 2024-08-20 | 66, 65 | 0d |  | start no earlier than 2024-02-28 | 623 | 722 | 623 | 722 |
| 68 | 3.9.4 | 3.7.4 IT infrastructure installation |  | 98d | 2024-04-05 | 2024-08-20 | 66 | 0d |  | start no earlier than 2024-02-28 | 623 | 722 | 623 | 722 |
| 69 | 3.10 | Completion of study centre development | milestone, manual | 0d | 2024-08-21 | 2024-08-21 | 64 |  |  |  | 721.38 | 722.38 | 721.38 | 722.38 |
| 70 | 4 | **4 Testing** |  | 527.38d | 2022-09-15 | 2024-09-23 |  |  |  |  |  |  |  |  |
| 71 | 4.1 | **4.1 System testing** |  | 21d | 2022-09-15 | 2022-10-14 | 38 |  |  |  |  |  |  |  |
| 72 | 4.1.1 | 4.1.1 Videoconferencing system testing |  | 21d | 2022-09-15 | 2022-10-14 | 34, 35, 36, 37 | 470d | 0d | finish no earlier than 2022-10-14 | 217 | 239 | 687 | 709 |
| 73 | 4.1.2 | 4.1.2 Student learning management system testing |  | 21d | 2022-09-15 | 2022-10-14 | 72SS | 470d | 0d | finish no earlier than 2022-10-14 | 217 | 239 | 687 | 709 |
| 74 | 4.2 | **4.2 Studio testing** |  | 20d | 2022-10-17 | 2022-11-15 | 71, 39 |  |  |  |  |  |  |  |
| 75 | 4.2.1 | 4.2.1 Equipment testing |  | 20d | 2022-10-18 | 2022-11-15 | 73, 72 | 468d | 0d | finish no earlier than 2022-11-15 | 240 | 261 | 708 | 729 |
| 76 | 4.2.2 | 4.2.2 Internet testing |  | 5d | 2022-10-18 | 2022-10-24 | 75SS | 468d | 0d | finish no earlier than 2022-10-20 | 240 | 246 | 708 | 714 |
| 77 | 4.2.3 | 4.2.3 Videoconferencing testing |  | 15d | 2022-10-25 | 2022-11-15 | 76 | 468d | 0d | finish no earlier than 2022-11-15 | 245 | 261 | 713 | 729 |

| ID | WBS | Task | Type | Duration | Start | Finish | Predecessors | Total slack | Free slack | Constraint | ES (Text1) | EF | LS | LF |
| --- | --- | --- | --- | --- | --- | --- | --- | --- | --- | --- | --- | --- | --- | --- |
| 78 | 4.3 | **4.3 Study centre 1&2 testing** |  | 20d | 2022-10-17 | 2022-11-15 | 71, 44 |  |  |  |  |  |  |  |
| 79 | 4.3.1 | 4.3.1 Equipment testing |  | 20d | 2022-10-18 | 2022-11-14 | 73, 72 | 468d | 0d | start no earlier than 2022-10-17 | 240 | 261 | 708 | 729 |
| 80 | 4.3.2 | 4.3.2 Internet testing |  | 6d | 2022-10-18 | 2022-10-25 | 79SS | 468d | 0d | start no earlier than 2022-10-13 | 240 | 247 | 708 | 715 |
| 81 | 4.3.3 | 4.3.3 Videoconferencing testing |  | 14d | 2022-10-26 | 2022-11-14 | 80 | 468d | 0d | finish no earlier than 2022-11-11 | 246 | 261 | 714 | 729 |
| 82 | 4.4 | **4.4 Study centre 3&4 testing** |  | 20d | 2023-03-31 | 2023-04-28 | 49 |  |  |  |  |  |  |  |
| 83 | 4.4.1 | 4.4.1 Equipment testing |  | 20d | 2023-04-03 | 2023-04-28 | 53 | 363d | 0d |  | 359 | 380 | 722 | 743 |
| 84 | 4.4.2 | 4.4.2 Internet testing |  | 6d | 2023-04-03 | 2023-04-10 | 83SS | 363d | 0d |  | 359 | 366 | 722 | 729 |
| 85 | 4.4.3 | 4.4.3 Videoconferencing testing |  | 14d | 2023-04-11 | 2023-04-28 | 84 | 363d | 0d |  | 365 | 380 | 728 | 743 |
| 86 | 4.5 | **4.5 Study centre 5&6 testing** |  | 22d | 2023-09-18 | 2023-10-20 | 54 |  |  |  |  |  |  |  |
| 87 | 4.5.1 | 4.5.1 Equipment testing |  | 20d | 2023-09-19 | 2023-10-16 | 58 | 240d | 0d |  | 480 | 501 | 720 | 741 |
| 88 | 4.5.2 | 4.5.2 Internet testing |  | 6d | 2023-09-19 | 2023-09-26 | 87SS | 240d | 0d |  | 480 | 487 | 720 | 727 |
| 89 | 4.5.3 | 4.5.3 Videoconferencing testing |  | 16d | 2023-09-27 | 2023-10-18 | 88 | 240d | 2d |  | 486 | 503 | 726 | 743 |
| 90 | 4.6 | **4.6 Study centre 7&8 testing** |  | 22d | 2024-03-07 | 2024-04-09 | 59 |  |  |  |  |  |  |  |
| 91 | 4.6.1 | 4.6.1 Equipment testing |  | 20d | 2024-03-08 | 2024-04-04 | 63 | 117d | 0d |  | 603 | 624 | 720 | 741 |
| 92 | 4.6.2 | 4.6.2 Internet testing |  | 6d | 2024-03-08 | 2024-03-15 | 91SS | 117d | 0d |  | 603 | 610 | 720 | 727 |
| 93 | 4.6.3 | 4.6.3 Videoconferencing testing |  | 16d | 2024-03-18 | 2024-04-08 | 92 | 117d | 0d |  | 609 | 626 | 726 | 743 |
| 94 | 4.7 | **4.7 Study centre 9&10 testing** |  | 23d | 2024-08-20 | 2024-09-23 | 69 |  |  |  |  |  |  |  |
| 95 | 4.7.1 | 4.7.1 Equipment testing |  | 20d | 2024-08-21 | 2024-09-17 | 68, 67 | 0d |  | start no earlier than 2024-08-15 | 721 | 742 | 721 | 742 |
| 96 | 4.7.2 | 4.7.2 Internet testing |  | 6d | 2024-08-21 | 2024-08-28 | 95SS | 0d |  | start no earlier than 2024-08-15 | 721 | 728 | 721 | 728 |
| 97 | 4.7.3 | 4.7.3 Videoconferencing testing |  | 17d | 2024-08-29 | 2024-09-20 | 96 | 0d |  |  | 727 | 745 | 727 | 745 |
| 98 | 4.8 | Completion of testing | milestone | 0d | 2024-09-23 | 2024-09-23 | 94 | -0.38d | 0d |  | 744.38 | 745.38 | 744 | 745 |
| 99 | 5 | **5 Training** |  | 36d | 2022-11-15 | 2023-01-04 |  | 0d |  |  |  |  |  |  |
| 100 | 5.1 | **5.1 Videoconferencing system training** |  | 24d | 2022-11-16 | 2022-12-20 | 78 |  |  |  |  |  |  |  |
| 101 | 5.1.1 | 5.1.1 Videoconferencing system training plan |  | 3d | 2022-11-15 | 2022-11-17 | 81, 79, 77, 75 | 468d | 0d | start no earlier than 2022-11-12 | 260 | 264 | 728 | 732 |
| 102 | 5.1.2 | 5.1.2 Videoconferencing system training implementation |  | 20d | 2022-11-18 | 2022-12-15 | 101 | 468d | 0d | finish no earlier than 2022-12-15 | 263 | 284 | 731 | 752 |
| 103 | 5.1.3 | 5.1.3 Videoconferencing system training documentation |  | 1d | 2022-12-16 | 2022-12-16 | 102 | 468d | 0d | finish no earlier than 2022-12-16 | 283 | 285 | 751 | 753 |

| ID | WBS | Task | Type | Duration | Start | Finish | Predecessors | Total slack | Free slack | Constraint | ES (Text1) | EF | LS | LF |
| --- | --- | --- | --- | --- | --- | --- | --- | --- | --- | --- | --- | --- | --- | --- |
| 104 | 5.2 | **5.2 Student learning management system training** |  | 10d | 2022-12-20 | 2023-01-03 | 100 |  |  |  |  |  |  |  |
| 105 | 5.2.1 | 5.2.1 Student learning management system training plan |  | 1d | 2022-12-19 | 2022-12-19 | 103 | 468d | 0d | start no earlier than 2022-12-16 | 284 | 286 | 752 | 754 |
| 106 | 5.2.2 | 5.2.2 Student learning management system training implementation |  | 8d | 2022-12-20 | 2022-12-29 | 105 | 468d | 0d | start no earlier than 2022-06-03 | 285 | 294 | 753 | 762 |
| 107 | 5.2.3 | 5.2.3 Student learning management system training document |  | 1d | 2022-12-30 | 2022-12-30 | 106 | 468d |  | start no earlier than 2022-06-03 | 293 | 295 | 761 | 763 |
| 108 | 5.3 | Completion of training | milestone, manual | 0d | 2023-01-04 | 2023-01-04 | 104 |  |  |  | 296 | 297 | 762 | 763 |
| 109 | 6 | **6 Rollout** |  | 524d | 2022-10-14 | 2024-10-16 |  | 0d |  |  |  |  |  |  |
| 110 | 6.1 | **6.1 Website content editing** |  | 24d | 2022-10-14 | 2022-11-16 | 71 |  |  |  |  |  |  |  |
| 111 | 6.1.1 | 6.1.1 OEU website editing |  | 12d | 2022-10-14 | 2022-10-31 | 73, 72 | 500d | 0d |  | 238 | 251 | 738 | 751 |
| 112 | 6.1.2 | 6.1.2 OEU social media editing |  | 12d | 2022-11-01 | 2022-11-16 | 111 | 500d |  | finish no earlier than 2022-11-04 | 250 | 263 | 750 | 763 |
| 113 | 6.2 | **6.2 Study centre 1&2 rollout** |  | 20d | 2022-11-15 | 2022-12-15 | 78, 74 |  |  |  |  |  |  |  |
| 114 | 6.2.1 | 6.2.1 Overall evaluation |  | 6d | 2022-11-16 | 2022-11-23 | 81 | 481d | 0d |  | 261 | 268 | 742 | 749 |
| 115 | 6.2.2 | 6.2.2 Marketing |  | 20d | 2022-11-16 | 2022-12-13 | 114SS | 481d |  | start no earlier than 2022-11-14 | 261 | 282 | 742 | 763 |
| 116 | 6.3 | **6.3 Study centre 3&4 rollout** |  | 20d | 2023-04-28 | 2023-05-26 | 82 |  |  |  |  |  |  |  |
| 117 | 6.3.1 | 6.3.1 Overall evaluation |  | 6d | 2023-05-01 | 2023-05-08 | 85, 83 | 363d | 0d |  | 379 | 386 | 742 | 749 |
| 118 | 6.3.2 | 6.3.2 Marketing |  | 20d | 2023-05-01 | 2023-05-26 | 117SS | 363d |  |  | 379 | 400 | 742 | 763 |
| 119 | 6.4 | **6.4 Study centre 5&6 rollout** |  | 20d | 2023-10-20 | 2023-11-22 | 86 |  |  |  |  |  |  |  |
| 120 | 6.4.1 | 6.4.1 Overall evaluation |  | 6d | 2023-10-23 | 2023-10-30 | 89, 87 | 238d | 0d |  | 504 | 511 | 742 | 749 |
| 121 | 6.4.2 | 6.4.2 Marketing |  | 20d | 2023-10-23 | 2023-11-17 | 120SS | 238d |  | finish no earlier than 2022-12-30 | 504 | 525 | 742 | 763 |
| 122 | 6.5 | **6.5 Study centre 7&8 rollout** |  | 20d | 2024-04-08 | 2024-05-07 | 90 |  |  |  |  |  |  |  |
| 123 | 6.5.1 | 6.5.1 Overall evaluation |  | 6d | 2024-04-09 | 2024-04-16 | 93, 91 | 117d | 0d |  | 625 | 632 | 742 | 749 |
| 124 | 6.5.2 | 6.5.2 Marketing |  | 20d | 2024-04-09 | 2024-05-06 | 123SS | 117d |  | finish no earlier than 2022-12-30 | 625 | 646 | 742 | 763 |
| 125 | 6.6 | **6.6 Study centre 9&10 rollout** |  | 18d | 2024-09-23 | 2024-10-16 | 98 |  |  |  |  |  |  |  |
| 126 | 6.6.1 | 6.6.1 Overall evaluation |  | 6d | 2024-09-23 | 2024-09-30 | 97, 95 | 12d |  | start no earlier than 2024-09-19 | 744 | 751 | 756 | 763 |
| 127 | 6.6.2 | 6.6.2 Marketing |  | 18d | 2024-09-23 | 2024-10-16 | 95, 97 | 0d |  | start no earlier than 2024-09-19 | 744 | 763 | 744 | 763 |
| 128 | 6.7 | Completion of study centre rollout | milestone | 0d | 2024-10-16 | 2024-10-16 | 113, 116, 119, 122, 125 | 0d |  |  | 762 | 763 | 762 | 763 |

| ID | WBS | Task | Duration | Start | Finish | Predecessors | Total slack | Constraint | ES (Text1) | EF | LS | LF |
| --- | --- | --- | --- | --- | --- | --- | --- | --- | --- | --- | --- | --- |
| 129 | 7 | **7 Closing** | 20d | 2024-10-16 | 2024-11-13 |  |  |  |  |  |  |  |
| 130 | 7.1 | 7.1 Final project report | 18d | 2024-10-17 | 2024-11-11 | 126, 127, 107, 124, 110, 123, 120, 121, 115, 114, 117, 118, 112, 108, 128 | 0d | start no earlier than 2024-10-15 | 762 | 781 | 762 | 781 |
| 131 | 7.2 | 7.2 Final project presentation | 2d | 2024-11-12 | 2024-11-13 | 130 | 0d |  | 780 | 783 | 780 | 783 |
| 132 | 7.3 | 7.3 Lessons learned report | 10d | 2024-10-17 | 2024-10-30 | 130SS | 10d |  | 762 | 773 | 772 | 783 |
